# All plastic High Altitude Observation Platfrom

Schedule from MS Project, 2013-04-22 to 2013-07-01, costs in €, A marks actual dates.

## Calendars

- Standard: Mon-Fri 09:00-12:30, 13:00-17:00; Sat-Sun off. Exceptions (off unless hours are given): 2013-04-22 10:30-12:30, 13:15-17:00, 2013-04-23 to 2013-04-26 09:00-12:30, 13:15-17:00, 2013-04-27 to 2013-04-30, 2013-05-01 to 2013-05-03 09:00-12:30, 13:15-17:00, 2013-05-04 to 2013-05-05, 2013-05-06 to 2013-05-07 08:00-12:00, 13:00-17:00, 2013-05-08 09:00-12:30, 13:15-17:00, 2013-05-09 to 2013-05-12, 2013-05-13 to 2013-05-17 09:00-12:30, 13:15-17:00, 2013-05-18 to 2013-05-20, 2013-05-21 to 2013-05-24 09:00-12:30, 13:15-17:00, 2013-05-25 to 2013-05-26, 2013-05-27 to 2013-05-30 09:00-12:30, 13:15-17:00, 2013-06-01 to 2013-06-02, 2013-06-08 to 2013-06-09, 2013-06-15 to 2013-06-16, 2013-06-22 to 2013-06-23, 2013-06-29 to 2013-06-30.

## Resources

| Resource | Rate |
| --- | --- |
| Bas | 10 |
| Boudewijn | 10 |
| Carel | 10 |
| Jannick | 10 |
| Kevin | 10 |
| Martijn | 10 |
| Monchill | 10 |
| Perrin | 10 |
| Rick | 10 |
| Ties | 10 |

## Schedule

| ID | WBS | Task | Type | Duration | Start | Finish | Predecessors | Complete | Remaining | Total slack | Free slack | Constraint | Resources | Work | Actual work | Cost | Actual cost |
| --- | --- | --- | --- | --- | --- | --- | --- | --- | --- | --- | --- | --- | --- | --- | --- | --- | --- |
| 1 | 1 | **Baseline** |  | 13.59d | 2013-04-22 10:30 A | 2013-05-16 17:00 |  | 46% | 7.29d | 28.24d |  |  |  | 376.24h | 149.98h | 3,762.4 | 1,499.8 |
| 2 | 1.1 | **Project Plan** |  | 13.59d | 2013-04-22 10:30 A | 2013-05-16 17:00 |  | 92% | 1.04d | 28.24d |  |  |  | 156.44h | 137.33h | 1,564.4 | 1,373.3 |
| 3 | 1.1.1 | **Group Organization** |  | 0.9d | 2013-04-22 10:30 A | 2013-04-23 10:28 |  | 60% | 0.36d | 0d |  |  |  | 29.75h | 15.24h | 297.5 | 152.4 |
| 4 | 1.1.1.1 | Belbin Test |  | 42min | 2013-04-22 10:30 A | 2013-04-22 11:12 A |  | 100% |  |  |  | start no earlier than 2013-04-22 10:30 | Kevin; Carel; Martijn; Perrin; Boudewijn; Monchill; Bas; Ties; Jannick; Rick | 7h | 7h | 70 | 70 |
| 5 | 1.1.1.2 | Dividing Group Functions |  | 3.63h | 2013-04-22 11:12 A | 2013-04-22 15:34 | 4 | 20% | 2.9h | 0.18d |  | start no earlier than 2013-04-22 11:12 | Kevin; Carel [50%]; Boudewijn [50%]; Rick [50%]; Monchill [50%]; Jannick [50%]; Ties [50%]; Martijn [50%]; Bas [50%] | 18.11h | 3.6h | 181.1 | 36 |
| 6 | 1.1.1.3 | Team Organogram |  | 2.9h | 2013-04-22 15:34 A | 2013-04-23 10:28 A | 5 | 100% |  |  |  |  | Rick [80%]; Martijn [80%] | 4.64h | 4.64h | 46.4 | 46.4 |
| 7 | 1.1.2 | **Project Planning** |  | 3.58d | 2013-04-23 09:00 A | 2013-04-26 16:37 A | 5 | 100% |  |  |  |  |  | 43.5h | 43.5h | 435 | 435 |
| 8 | 1.1.2.1 | Gantt Chart |  | 2.72d | 2013-04-23 09:00 A | 2013-04-25 17:00 A |  | 100% |  |  |  | start no earlier than 2013-04-23 09:00 | Kevin [80%]; Jannick [80%] | 34.8h | 34.8h | 348 | 348 |
| 9 | 1.1.2.2 | HR Allocation |  | 1.81h | 2013-04-26 09:00 A | 2013-04-26 10:48 A | 8 | 100% |  |  |  |  | Kevin [80%]; Jannick [80%] | 2.9h | 2.9h | 29 | 29 |
| 10 | 1.1.2.3 | WBS |  | 1.81h | 2013-04-26 10:48 A | 2013-04-26 13:21 A | 9 | 100% |  |  |  |  | Jannick [80%]; Kevin [80%] | 2.9h | 2.9h | 29 | 29 |
| 11 | 1.1.2.4 | WFD |  | 1.81h | 2013-04-26 14:49 A | 2013-04-26 16:37 A | 10 | 100% |  |  |  | start no earlier than 2013-04-26 14:49 | Kevin [80%]; Jannick [80%] | 2.9h | 2.9h | 29 | 29 |
| 12 | 1.1.3 | **Project Control** |  | 0.36d | 2013-04-22 15:34 A | 2013-04-23 10:28 A |  | 100% |  |  |  |  |  | 5.22h | 5.22h | 52.2 | 52.2 |
| 13 | 1.1.3.1 | Progress Monitoring Plan |  | 2.9h | 2013-04-22 15:34 A | 2013-04-23 10:28 A | 5 | 100% |  |  |  |  | Bas [80%] | 2.32h | 2.32h | 23.2 | 23.2 |
| 14 | 1.1.3.2 | Version Control & Traceability |  | 1.45h | 2013-04-22 15:34 A | 2013-04-23 09:01 A | 5 | 100% |  |  |  |  | Boudewijn [80%] | 1.16h | 1.16h | 11.6 | 11.6 |
| 15 | 1.1.3.3 | Corrective action definition |  | 2.17h | 2013-04-22 15:34 A | 2013-04-23 09:44 A | 5 | 100% |  |  |  |  | Bas [80%] | 1.74h | 1.74h | 17.4 | 17.4 |
| 16 | 1.1.4 | Project Plan Reporting |  | 3.62d | 2013-05-07 16:14 A | 2013-05-16 17:00 A | 3 | 100% |  |  |  |  | Boudewijn [20%]; Monchill [20%]; Bas [20%]; Jannick [20%]; Kevin [20%]; Ties [20%]; Rick [20%]; Martijn [20%] | 46.4h | 46.4h | 464 | 464 |
| 17 | 1.1.5 | Project Plan Milestone | milestone | 0d | 2013-04-26 16:37 A | 2013-04-26 16:37 A |  | 100% |  |  |  | start no later than 2013-04-26 17:00 |  |  |  |  |  |
| 18 | 1.1.6 | **Stakeholder Needs** |  | 4.76d | 2013-04-23 09:00 A | 2013-05-02 10:48 |  | 84% | 0.77d | 36.36d |  |  |  | 31.57h | 26.97h | 315.7 | 269.7 |
| 19 | 1.1.6.1 | Market Analysis |  | 3.17d | 2013-04-23 09:00 A | 2013-04-26 13:22 | 5 | 90% | 0.32d | 37.67d | 1.13d | start no earlier than 2013-04-23 09:00 | Carel [33%]; Perrin [80%] | 28.67h | 25.81h | 286.7 | 258.1 |
| 20 | 1.1.6.2 | Sustainable Development Strategy [BL] |  | 3.62h | 2013-05-01 15:11 A | 2013-05-02 10:48 | 19 | 40% | 2.17h | 36.36d |  | start no earlier than 2013-05-01 09:00 | Boudewijn [80%] | 2.9h | 1.16h | 29 | 11.6 |
| 21 | 1.2 | **Conceptual Design** |  | 4.98d | 2013-04-23 09:00 A | 2013-05-02 13:22 |  | 24% | 3.79d | 36.13d |  |  |  | 106.7h | 12.65h | 1,067 | 126.5 |
| 22 | 1.2.1 | **Risk Management** |  | 1.36d | 2013-05-01 09:00 | 2013-05-02 13:22 |  |  |  | 36.13d |  |  |  | 17.4h |  | 174 |  |
| 23 | 1.2.1.1 | Risk Identification |  | 3.62h | 2013-05-01 09:00 | 2013-05-01 13:22 |  |  |  | 36.13d | 0d | start no earlier than 2013-05-01 09:00 | Martijn [80%]; Bas [80%] | 5.8h |  | 58 |  |
| 24 | 1.2.1.2 | Technical Risk Assesment |  | 1.81h | 2013-05-01 13:22 | 2013-05-01 15:11 | 23 |  |  | 36.13d | 0d |  | Martijn [80%]; Bas [80%] | 2.9h |  | 29 |  |
| 25 | 1.2.1.3 | Risk Map |  | 1.81h | 2013-05-01 15:11 | 2013-05-02 09:00 | 24 |  |  | 36.13d | 0d |  | Martijn [80%]; Bas [80%] | 2.9h |  | 29 |  |
| 26 | 1.2.1.4 | Contingency Managment |  | 3.62h | 2013-05-02 09:00 | 2013-05-02 13:22 | 25 |  |  | 36.13d |  |  | Bas [80%]; Martijn [80%] | 5.8h |  | 58 |  |

| ID | WBS | Task | Type | Duration | Start | Finish | Predecessors | Complete | Remaining | Total slack | Free slack | Constraint | Resources | Work | Actual work | Cost | Actual cost |
| --- | --- | --- | --- | --- | --- | --- | --- | --- | --- | --- | --- | --- | --- | --- | --- | --- | --- |
| 27 | 1.2.2 | **Design Concept Investigation** |  | 0.84d | 2013-05-01 09:00 | 2013-05-01 16:27 |  |  |  | 36.65d |  |  |  | 42.04h |  | 420.4 |  |
| 28 | 1.2.2.1 | DOS |  | 5.44h | 2013-05-01 09:00 | 2013-05-01 15:11 |  |  |  | 36.81d |  | start no earlier than 2013-05-01 09:00 | Bas [60%]; Kevin [60%]; Jannick [60%]; Monchill [80%]; Martijn [60%]; Carel [60%]; Rick [60%]; Boudewijn [60%]; Ties [80%]; Perrin [60%] | 34.78h |  | 347.8 |  |
| 29 | 1.2.2.2 | Resource Allocation/Budget |  | 4.54h | 2013-05-01 11:10 | 2013-05-01 16:27 |  |  |  | 36.65d |  | start no earlier than 2013-05-01 11:10 | Monchill [80%]; Rick [80%] | 7.26h |  | 72.6 |  |
| 30 | 1.2.3 | **Mission Definition** |  | 3.44d | 2013-04-23 10:28 A | 2013-05-01 09:00 |  | 31% | 2.38d | 37.49d |  |  |  | 46.1h | 11.72h | 461 | 117.2 |
| 31 | 1.2.3.1 | MNS |  | 1.45h | 2013-04-24 10:33 A | 2013-04-24 12:06 A | 5 | 100% |  |  |  | start no earlier than 2013-04-24 10:27 | Ties [80%] | 1.16h | 1.16h | 11.6 | 11.6 |
| 32 | 1.2.3.2 | RDT |  | 2.13d | 2013-04-23 14:55 A | 2013-04-26 09:28 | 33 | 80% | 0.43d | 38.34d |  |  | Monchill [17%]; Ties [17%] | 5.8h | 4.64h | 58 | 46.4 |
| 33 | 1.2.3.3 | Project FFD |  | 3.7h | 2013-04-23 10:28 A | 2013-04-23 14:55 A | 3 | 100% |  |  |  |  | Monchill [80%]; Boudewijn [80%] | 5.92h | 5.92h | 59.2 | 59.2 |
| 34 | 1.2.3.4 | **Department Functional Analysis** |  | 1.81d | 2013-04-25 09:00 | 2013-05-01 09:00 | 33 |  |  | 37.49d |  |  |  | 33.22h |  | 332.2 |  |
| 35 | 1.2.3.4.1 | Aerodynamics FB & LS |  | 0.91d | 2013-04-25 09:00 | 2013-04-25 16:59 | 33 |  |  | 38.4d |  | start no earlier than 2013-04-25 08:00 | Boudewijn [33%] | 2.39h |  | 23.9 |  |
| 36 | 1.2.3.4.2 | Structures FB & LS |  | 0.91d | 2013-04-26 09:00 | 2013-05-01 09:00 | 33 |  |  | 37.49d |  | start no earlier than 2013-04-26 09:00 | Rick [75%]; Martijn [75%]; Bas [75%]; Ties [75%]; Monchill [75%]; Boudewijn [50%] | 30.83h |  | 308.3 |  |
| 37 | 1.2.3.4.3 | CS FB & LS |  | 1d | 2013-04-25 09:00 | 2013-04-26 09:45 | 33 |  |  | 38.3d |  | start no earlier than 2013-04-25 08:00 |  |  |  |  |  |
| 38 | 1.2.3.4.4 | P&P FB & LS |  | 1d | 2013-04-25 09:00 | 2013-04-26 09:45 | 33 |  |  | 38.3d |  | start no earlier than 2013-04-25 08:00 |  |  |  |  |  |
| 39 | 1.2.3.4.5 | Payload FB & LS |  | 1d | 2013-04-25 09:00 | 2013-04-26 09:45 | 33 |  |  | 38.3d |  | start no earlier than 2013-04-25 08:00 |  |  |  |  |  |
| 40 | 1.2.4 | **Project Definition** |  | 0.18d | 2013-04-23 09:00 A | 2013-04-23 10:27 |  | 80% | 0.04d | 40.94d |  |  |  | 1.16h | 0.93h | 11.6 | 9.3 |
| 41 | 1.2.4.1 | POS |  | 1.45h | 2013-04-23 09:00 A | 2013-04-23 10:27 | 5 | 80% | 0.29h | 40.94d |  | start no earlier than 2013-04-23 09:00 | Ties [80%] | 1.16h | 0.93h | 11.6 | 9.3 |
| 42 | 1.3 | **Reporting** |  | 6.34d | 2013-04-22 10:30 | 2013-05-03 10:30 |  |  |  | 0.72d |  |  |  | 113.1h |  | 1,131 |  |
| 43 | 1.3.1 | Baseline Presentation |  | 0.91d | 2013-04-22 10:30 | 2013-04-23 10:30 |  |  |  | 7.16d |  | finish no later than 2013-05-06 17:00 | Carel [80%]; Boudewijn [80%] | 11.6h |  | 116 |  |
| 44 | 1.3.2 | Baseline Reporting |  | 1.27w | 2013-04-22 10:30 | 2013-05-03 10:30 |  |  |  | 0.72d |  | finish no later than 2013-05-03 17:00 | Bas [20%]; Carel [20%]; Ties [20%]; Perrin [20%]; Monchill [20%]; Rick [20%]; Boudewijn [20%]; Jannick [20%]; Martijn [20%]; Kevin [20%] | 101.5h |  | 1,015 |  |
| 45 | 1.4 | Baseline Report Milestone | milestone | 0d | 2013-05-03 16:59 | 2013-05-03 16:59 |  |  |  | 12.88d | 0d | start no earlier than 2013-05-03 16:59 |  |  |  |  |  |
| 46 | 2 | **Midterm** |  | 13.78d | 2013-05-03 16:59 | 2013-05-29 17:00 | 45 |  |  | 12.88d |  |  |  | 613.4h |  | 6,134 |  |
| 47 | 2.1 | N2 Chart & Interface |  | 3.62h | 2013-05-03 16:59 | 2013-05-06 11:36 |  |  |  | 34.32d |  |  | Bas [80%]; Boudewijn [80%] | 5.8h |  | 58 |  |
| 48 | 2.2 | **Conceptual Design Phase** |  | 7.7d | 2013-05-07 08:00 | 2013-05-22 11:52 |  |  |  | 25.16d |  |  |  | 446.6h |  | 4,466 |  |
| 49 | 2.2.1 | Trade Procedures Generation |  | 0.91d | 2013-05-07 08:00 | 2013-05-07 16:15 |  |  |  | 25.16d | 0d | start no earlier than 2013-05-07 08:00 | Perrin; Martijn; Carel; Rick; Monchill; Boudewijn; Ties; Bas; Jannick; Kevin | 72.5h |  | 725 |  |
| 50 | 2.2.2 | Generation and Documentation of Five Concepts |  | 3.62d | 2013-05-07 16:15 | 2013-05-15 16:15 | 49 |  |  | 25.16d | 0d | start no earlier than 2013-05-07 16:15 | Ties [80%]; Perrin [80%]; Jannick [80%]; Martijn [80%]; Carel [80%]; Kevin [80%]; Bas [80%]; Monchill [80%]; Rick [80%]; Boudewijn [80%] | 232h |  | 2,320 |  |
| 51 | 2.2.3 | Trade-Off |  | 1.81d | 2013-05-15 16:15 | 2013-05-17 16:15 | 50 |  |  | 25.16d | 0d |  | Kevin [80%]; Monchill [80%]; Perrin [80%]; Boudewijn [80%]; Rick [80%]; Bas [80%]; Carel [80%]; Ties [80%]; Martijn [80%]; Jannick [80%] | 116h |  | 1,160 |  |
| 52 | 2.2.4 | Trade Summary & Table |  | 1.36d | 2013-05-17 16:15 | 2013-05-22 11:52 | 51 |  |  | 25.62d | 0d |  | Rick [80%] | 8.7h |  | 87 |  |
| 53 | 2.2.5 | Final Concept Summary |  | 1.36d | 2013-05-17 16:15 | 2013-05-22 11:52 | 51 |  |  | 25.16d | 0d | start no earlier than 2013-05-17 09:00 | Bas [80%]; Boudewijn [80%] | 17.4h |  | 174 |  |

| ID | WBS | Task | Type | Duration | Start | Finish | Predecessors | Total slack | Free slack | Constraint | Resources | Work | Cost |
| --- | --- | --- | --- | --- | --- | --- | --- | --- | --- | --- | --- | --- | --- |
| 54 | 2.3 | **Concept Analysis** |  | 1.36d | 2013-05-17 16:15 | 2013-05-22 11:52 |  | 26.07d |  |  |  | 60.9h | 609 |
| 55 | 2.3.1 | Operation and logistic concept description |  | 1.36d | 2013-05-17 16:15 | 2013-05-22 11:52 | 51 | 26.07d |  |  | Jannick [80%]; Kevin [80%] | 17.4h | 174 |
| 56 | 2.3.2 | Communication Flow Diagram |  | 1.36d | 2013-05-17 16:15 | 2013-05-22 11:52 | 51 | 26.07d |  |  | Martijn [80%]; Monchill [80%] | 17.4h | 174 |
| 57 | 2.3.3 | Sensitivity Analysis |  | 1.36d | 2013-05-17 16:15 | 2013-05-22 11:52 | 51 | 26.07d |  |  | Ties [80%]; Perrin [80%] | 17.4h | 174 |
| 58 | 2.3.4 | Design Verification & Validation Plan |  | 1.36d | 2013-05-17 16:15 | 2013-05-22 11:52 | 51 | 26.07d |  |  | Carel [80%] | 8.7h | 87 |
| 59 | 2.4 | **Update Project Plan** |  | 0.91d | 2013-05-22 11:52 | 2013-05-23 11:52 |  | 25.16d |  |  |  | 47.9h | 479 |
| 60 | 2.4.1 | Group Organization |  | 3.63h | 2013-05-22 11:52 | 2013-05-22 16:15 | 53 | 25.16d | 0d | start no earlier than 2013-05-03 15:34 | Monchill; Jannick; Perrin; Martijn; Boudewijn; Bas; Ties; Carel; Kevin; Rick | 36.3h | 363 |
| 61 | 2.4.2 | Gantt Chart & WFD & WBS |  | 1.81h | 2013-05-22 16:15 | 2013-05-23 10:04 | 60 | 25.16d | 0d | start no earlier than 2013-05-07 09:00 | Jannick [80%]; Kevin [80%] | 2.9h | 29 |
| 62 | 2.4.3 | HR Allocation |  | 1.81h | 2013-05-23 10:04 | 2013-05-23 11:52 | 61 | 25.16d |  |  | Jannick [80%]; Kevin [80%] | 2.9h | 29 |
| 63 | 2.4.4 | Team Organogram |  | 3.62h | 2013-05-22 16:15 | 2013-05-23 11:52 | 60 | 25.16d |  |  | Martijn [80%]; Rick [80%] | 5.8h | 58 |
| 64 | 2.5 | **Update Risk Management** |  | 0.45d | 2013-05-22 11:52 | 2013-05-22 16:15 |  | 25.62d |  |  |  | 2.9h | 29 |
| 65 | 2.5.1 | Technical Risk Assement |  | 1.81h | 2013-05-22 11:52 | 2013-05-22 14:26 | 52 | 25.62d | 0d |  | Martijn [80%] | 1.45h | 14.5 |
| 66 | 2.5.2 | Risk Map |  | 1.81h | 2013-05-22 14:26 | 2013-05-22 16:15 | 65 | 25.62d |  |  | Martijn [80%] | 1.45h | 14.5 |
| 67 | 2.6 | **Update Production** |  | 0.45d | 2013-05-22 11:52 | 2013-05-22 16:15 |  | 25.62d |  |  |  | 11.6h | 116 |
| 68 | 2.6.1 | Update Requirements |  | 3.62h | 2013-05-22 11:52 | 2013-05-22 16:15 | 52 | 25.62d |  |  | Monchill [80%] | 2.9h | 29 |
| 69 | 2.6.2 | Update DOS |  | 3.62h | 2013-05-22 11:52 | 2013-05-22 16:15 | 52 | 25.62d |  |  | Ties [80%] | 2.9h | 29 |
| 70 | 2.6.3 | Update Resource Allocation/Budget |  | 3.62h | 2013-05-22 11:52 | 2013-05-22 16:15 | 52 | 25.62d |  |  | Rick [80%] | 2.9h | 29 |
| 71 | 2.6.4 | Update Sustainable Development Strategy [MT] |  | 3.62h | 2013-05-22 11:52 | 2013-05-22 16:15 | 52 | 25.62d |  |  | Boudewijn [80%] | 2.9h | 29 |
| 72 | 2.7 | **Reporting** |  | 11.78d | 2013-05-08 09:00 | 2013-05-29 17:00 |  | 20.99d |  |  |  | 37.7h | 377 |
| 73 | 2.7.1 | Midterm Reporting |  | 1.81d | 2013-05-08 09:00 | 2013-05-13 17:00 | 49 | 30.96d |  | start no earlier than 2013-05-08 09:00 | Rick [20%]; Boudewijn [20%]; Perrin [20%]; Monchill [20%]; Kevin [20%]; Martijn [20%]; Carel [20%]; Ties [20%]; Bas [20%] | 26.1h | 261 |
| 74 | 2.7.2 | Midterm Presentation |  | 0.91d | 2013-05-29 09:00 | 2013-05-29 17:00 | 49 | 20.99d |  | finish no earlier than 2013-05-29 17:00 | Boudewijn [80%]; Carel [80%] | 11.6h | 116 |
| 75 | 2.8 | Midterm Report Milestone | milestone | 0d | 2013-05-28 16:59 | 2013-05-28 16:59 |  | 0d |  | start no earlier than 2013-05-28 16:59 |  |  |  |
| 76 | 3 | **Final** |  | 21.9d | 2013-05-28 16:59 | 2013-07-01 12:11 | 75 | 0d |  |  |  |  |  |
| 77 | 3.1 | **Preliminary Design** |  | 9.9d | 2013-05-28 16:59 | 2013-06-12 14:11 |  | 0d |  |  |  |  |  |
| 78 | 3.1.1 | **SubsystemsTrade-off** |  | 9.9d | 2013-05-28 16:59 | 2013-06-12 14:11 |  | 0d |  |  |  |  |  |
| 79 | 3.1.1.1 | **Aerodynamics** |  | 9.9d | 2013-05-28 16:59 | 2013-06-12 14:11 |  | 0d |  |  |  |  |  |
| 80 | 3.1.1.1.1 | Aerodynamics Tool Creation & Verification |  | 1.5w | 2013-05-28 16:59 | 2013-06-10 09:29 |  | 0d |  |  |  |  |  |
| 81 | 3.1.1.1.2 | Aerodynamic Trade-off |  | 1.2d | 2013-06-10 09:29 | 2013-06-11 11:35 | 80 | 0d |  |  |  |  |  |
| 82 | 3.1.1.1.3 | Aerodynamics Data Calculation |  | 1.2d | 2013-06-11 11:35 | 2013-06-12 14:11 | 81 | 0d |  |  |  |  |  |

| ID | WBS | Task | Duration | Start | Finish | Predecessors | Total slack | Free slack |
| --- | --- | --- | --- | --- | --- | --- | --- | --- |
| 83 | 3.1.1.2 | **Structures** | 9.9d | 2013-05-28 16:59 | 2013-06-12 14:11 |  | 0d |  |
| 84 | 3.1.1.2.1 | Structures Tool Creation & Verification | 1.5w | 2013-05-28 16:59 | 2013-06-10 09:29 |  | 0d |  |
| 85 | 3.1.1.2.2 | Structures Data Calculation | 1.2d | 2013-06-10 09:29 | 2013-06-11 11:35 | 84 | 0d |  |
| 86 | 3.1.1.2.3 | Structures Trade-off | 1.2d | 2013-06-11 11:35 | 2013-06-12 14:11 | 85 | 0d |  |
| 87 | 3.1.1.3 | **Control & Stability** | 9.9d | 2013-05-28 16:59 | 2013-06-12 14:11 |  | 0d |  |
| 88 | 3.1.1.3.1 | CS Tool Creation & Verification | 1.5w | 2013-05-28 16:59 | 2013-06-10 09:29 |  | 0d |  |
| 89 | 3.1.1.3.2 | CS Data Calculation | 1.2d | 2013-06-10 09:29 | 2013-06-11 11:35 | 88 | 0d |  |
| 90 | 3.1.1.3.3 | CS Trade-off | 1.2d | 2013-06-11 11:35 | 2013-06-12 14:11 | 89 | 0d |  |
| 91 | 3.1.1.4 | **Performance & Propulsion** | 9.9d | 2013-05-28 16:59 | 2013-06-12 14:11 |  | 0d |  |
| 92 | 3.1.1.4.1 | P&P Tool Creation & Verification | 1.5w | 2013-05-28 16:59 | 2013-06-10 09:29 |  | 0d |  |
| 93 | 3.1.1.4.2 | P&P Data Calculation | 1.2d | 2013-06-10 09:29 | 2013-06-11 11:35 | 92 | 0d |  |
| 94 | 3.1.1.4.3 | P&P Trade-off | 1.2d | 2013-06-11 11:35 | 2013-06-12 14:11 | 93 | 0d |  |
| 95 | 3.1.1.5 | **Payload** | 5.11d | 2013-05-28 16:59 | 2013-06-05 13:23 |  | 4.79d |  |
| 96 | 3.1.1.5.1 | Payload Tool Creation & Verification | 4.9h | 2013-05-28 16:59 | 2013-05-29 14:38 |  | 4.79d | 0d |
| 97 | 3.1.1.5.2 | Payload Data Calculation | 3.3d | 2013-05-29 14:38 | 2013-06-04 10:47 | 96 | 4.79d | 0d |
| 98 | 3.1.1.5.3 | Payload Trade-off | 1.2d | 2013-06-04 10:47 | 2013-06-05 13:23 | 97 | 4.79d |  |
| 99 | 3.2 | **Production** | 3.3d | 2013-06-12 14:11 | 2013-06-18 10:05 | 77 | 0.7d | 0d |
| 100 | 3.2.1 | Post DSE Project Gantt Chart | 1.1d | 2013-06-12 14:11 | 2013-06-13 15:29 |  | 0.7d | 0d |
| 101 | 3.2.2 | Update Operations and logistic concept description | 1.1d | 2013-06-13 15:29 | 2013-06-14 16:47 | 100 | 0.7d | 0d |
| 102 | 3.2.3 | PD&D | 1.1d | 2013-06-14 16:47 | 2013-06-18 10:05 | 101 | 0.7d |  |
| 103 | 3.3 | **Finance** | 1.35d | 2013-06-18 10:05 | 2013-06-19 13:53 | 99 | 0.7d | 0d |
| 104 | 3.3.1 | Production Plan | 3.6h | 2013-06-18 10:05 | 2013-06-18 14:11 |  | 0.7d | 0d |
| 105 | 3.3.2 | ROI | 3.6h | 2013-06-18 14:11 | 2013-06-19 09:47 | 104 | 0.7d | 0d |
| 106 | 3.3.3 | Cost BS | 3.6h | 2013-06-19 09:47 | 2013-06-19 13:53 | 105 | 0.7d |  |

| ID | WBS | Task | Type | Duration | Start | Finish | Predecessors | Total slack | Free slack | Constraint |
| --- | --- | --- | --- | --- | --- | --- | --- | --- | --- | --- |
| 107 | 3.4 | **Electrical System** |  | 2.25d | 2013-06-19 13:53 | 2013-06-21 16:53 | 103 | 0.7d | 0d |  |
| 108 | 3.4.1 | Hardware BD |  | 3.6h | 2013-06-19 13:53 | 2013-06-20 09:29 |  | 0.7d | 0d |  |
| 109 | 3.4.2 | Software BD |  | 3.6h | 2013-06-20 09:29 | 2013-06-20 13:35 | 108 | 0.7d | 0d |  |
| 110 | 3.4.3 | Electrical BD |  | 3.6h | 2013-06-20 13:35 | 2013-06-21 09:11 | 109 | 0.7d | 0d |  |
| 111 | 3.4.4 | Data Handling BD |  | 3.6h | 2013-06-21 09:11 | 2013-06-21 13:17 | 110 | 0.7d | 0d |  |
| 112 | 3.4.5 | Communication FD |  | 3.6h | 2013-06-21 13:17 | 2013-06-21 16:53 | 111 | 0.7d |  |  |
| 113 | 3.5 | **Validation Procedures** |  | 2.2d | 2013-06-21 16:53 | 2013-06-26 11:29 | 107 | 0.7d | 0d |  |
| 114 | 3.5.1 | Requirements Compliance Matrix |  | 1.1d | 2013-06-21 16:53 | 2013-06-25 10:11 |  | 0.7d | 0d |  |
| 115 | 3.5.2 | Feasebility Analysis |  | 1.1d | 2013-06-25 10:11 | 2013-06-26 11:29 | 114 | 0.7d |  |  |
| 116 | 3.6 | **Design Strength** |  | 2.2d | 2013-06-26 11:29 | 2013-06-28 14:35 | 113 | 0.7d |  |  |
| 117 | 3.6.1 | Sustainable development strategy |  | 1.1d | 2013-06-26 11:29 | 2013-06-27 13:17 |  | 0.7d | 0d |  |
| 118 | 3.6.2 | Sensitivity Analysis |  | 1.1d | 2013-06-27 13:17 | 2013-06-28 14:35 | 117 | 0.7d |  |  |
| 119 | 3.7 | **Reporting** |  | 12d | 2013-06-12 14:11 | 2013-07-01 12:11 | 77 | 0d |  |  |
| 120 | 3.7.1 | Final Reporting |  | 2.4w | 2013-06-12 14:11 | 2013-07-01 12:11 |  | 0d |  | start no earlier than 2013-05-28 09:00 |
| 121 | 3.7.2 | Final Presentation |  | 2.4w | 2013-06-12 14:11 | 2013-07-01 12:11 |  | 0d |  | start no earlier than 2013-05-08 09:00 |
| 122 | 3.8 | Final Report Milestone | milestone | 0d | 2013-06-27 09:00 | 2013-06-27 09:00 |  | 2.27d |  | start no earlier than 2013-06-27 09:00 |
